# 自助机产品研发项目工程表

How a schedule from MS Project changed from version to version. A marks actual dates.

## Version 1 (saved 2017-03-26, file 自助机产品研发项目工程表.mpp)

Note of the change: normal commit

| ID | WBS | Task | Duration | Start | Finish | Predecessors | Complete | Total float | Constraint |
| --- | --- | --- | --- | --- | --- | --- | --- | --- | --- |
| 1 | 1 | **自助机研发** | 125d? | 2016-12-16 A | 2017-05-22 |  | 40% | 0d |  |
| 2 | 1.1 | **SSM研发第一阶段** | 41d? | 2016-12-16 A | 2017-02-09 |  | 95% | -3d |  |
| 3 | 1.1.1 | **设计及基础环境准备** | 13d? | 2016-12-16 A | 2016-12-30 A |  | 100% |  |  |
| 4 |  | 界面原型设计 | 13d | 2016-12-16 A | 2016-12-30 A |  | 100% |  | start no earlier than 2016-12-16 |
| 5 |  | 软件基础环境准备 | 5d | 2016-12-26 A | 2016-12-30 A |  | 100% |  | start no earlier than 2016-12-26 |
| 6 |  | 硬件外设基础环境准备 | 9d? | 2016-12-19 A | 2016-12-28 A |  | 100% |  | start no earlier than 2016-12-19 |
| 7 | 1.1.2 | **开发** | 30d? | 2016-12-29 A | 2017-02-09 |  | 92% | -3d |  |
| 8 | 1.1.2.1 | **硬件接口封装** | 26d? | 2016-12-29 A | 2017-02-04 |  | 92% | -2d |  |
| 9 |  | 卷票打印机 | 2d | 2016-12-29 A | 2016-12-30 A |  | 100% |  | start no earlier than 2016-12-29 |
| 10 |  | 钞箱 | 1d | 2017-01-03 A | 2017-01-03 A | 9 | 100% |  |  |
| 11 |  | 多合一读卡器 | 1d | 2017-01-04 A | 2017-01-04 A | 10 | 100% |  |  |
| 12 |  | 银联卡读卡器 | 1d | 2017-01-05 A | 2017-01-05 A | 11 | 100% |  |  |
| 13 |  | 银联支付密码键盘 | 1d? | 2017-01-06 A | 2017-01-06 A | 12 | 100% |  |  |
| 14 |  | 发卡装置（证卡打印机） | 12d | 2017-01-09 A | 2017-01-21 A | 17 | 100% |  |  |
| 15 |  | 医保卡读卡器 | 1d | 2017-02-04 | 2017-02-04 | 18 |  | -14d |  |
| 16 |  | 报告打印机 | 4d | 2017-01-22 A | 2017-01-25 A | 14 | 100% |  |  |
| 17 |  | 身份证读卡器 | 1d | 2017-01-07 A | 2017-01-07 A | 13 | 100% |  |  |
| 18 |  | 指示灯 | 1d | 2017-02-03 | 2017-02-03 | 19 |  | -13d |  |
| 19 |  | 语音 | 1d? | 2017-01-26 A | 2017-01-26 A | 16 | 100% |  |  |
| 20 |  | 报警装置 | 1d? | 2017-02-04 | 2017-02-04 | 15 |  | -13d |  |
| 21 |  | 病历封面打印机 | 1d? | 2017-02-06 | 2017-02-06 | 20 |  | -14d |  |
| 22 | 1.1.2.2 | **自助机功能开发** | 25d? | 2017-01-03 A | 2017-02-06 A |  | 100% |  |  |
| 23 |  | 业务基础框架 | 11d | 2017-01-03 A | 2017-01-14 A |  | 100% |  |  |
| 24 |  | 办理就诊卡 | 2d | 2017-01-03 A | 2017-01-04 A |  | 100% |  |  |
| 25 |  | 自助建档 | 2d | 2017-01-05 A | 2017-01-06 A | 24 | 100% |  |  |
| 26 |  | 预约医生 | 1d | 2017-01-09 A | 2017-01-09 A | 27 | 100% |  |  |
| 27 |  | 预约签到 | 1d? | 2017-01-07 A | 2017-01-07 A | 25 | 100% |  |  |
| 28 |  | 预约查询 | 1d? | 2017-01-10 A | 2017-01-10 A | 26 | 100% |  |  |
| 29 |  | 开通预存 | 1d? | 2017-01-11 A | 2017-01-11 A | 28 | 100% |  |  |
| 30 |  | 现金预存 | 1d | 2017-01-12 A | 2017-01-12 A | 29 | 100% |  |  |
| 31 |  | 银行卡预存 | 1d | 2017-01-13 A | 2017-01-13 A | 30 | 100% |  |  |
| 32 |  | 支付宝/微信预存 | 1d | 2017-01-14 A | 2017-01-14 A | 31 | 100% |  |  |
| 33 |  | 预存消费记录查询 | 1d? | 2017-01-19 A | 2017-01-19 A | 40 | 100% |  |  |
| 34 |  | 检查单查询（及打印） | 1d | 2017-01-22 A | 2017-01-22 A | 36 | 100% |  |  |
| 35 |  | 门诊病历打印 | 4d | 2017-01-23 A | 2017-01-26 A | 34 | 100% |  |  |
| 36 |  | 缴费 | 2d | 2017-01-20 A | 2017-01-21 A | 33 | 100% |  |  |
| 37 | 1.1.2.2.15 | **住院预缴** | 3d? | 2017-01-16 A | 2017-01-18 A |  | 100% |  |  |
| 38 |  | 就诊卡预存转预缴 | 1d? | 2017-01-16 A | 2017-01-16 A | 32 | 100% |  |  |
| 39 |  | 银行卡预缴 | 1d? | 2017-01-17 A | 2017-01-17 A | 38 | 100% |  |  |
| 40 |  | 支付宝/微信预缴 | 1d? | 2017-01-18 A | 2017-01-18 A | 39 | 100% |  |  |
| 41 |  | 住院日清单 | 1d | 2017-02-03 A | 2017-02-03 A | 35 | 100% |  |  |
| 42 |  | 住院费用查询 | 1d | 2017-02-04 A | 2017-02-04 A | 41 | 100% |  |  |
| 43 |  | 住院身份登记 | 1d | 2017-02-06 A | 2017-02-06 A | 42 | 100% |  |  |
| 44 | 1.1.2.3 | **管理功能开发** | 3d? | 2017-02-07 | 2017-02-09 |  |  | -17d |  |
| 45 |  | 钱箱管理 | 1d? | 2017-02-07 | 2017-02-07 | 43 |  | -17d |  |
| 46 |  | 现金管理 | 1d | 2017-02-08 | 2017-02-08 | 45 |  | -17d |  |
| 47 |  | 运营统计 | 1d | 2017-02-09 | 2017-02-09 | 46 |  | -17d |  |
| 48 | 1.2 | **昆华自助机系统** | 64d? | 2017-01-16 A | 2017-04-05 | 2 | 10% | 37d |  |
| 49 | 1.2.1 | **业务流程设计** | 12d? | 2017-03-06 A | 2017-03-17 |  | 24% | 15d |  |
| 50 | 1.2.1.1 | **支付业务流程** | 12d? | 2017-03-06 | 2017-03-17 |  |  | 15d |  |
| 51 |  | 银行业务流程 | 10d? | 2017-03-06 | 2017-03-15 |  |  | 14d | start no earlier than 2017-03-06 |
| 52 |  | 商户申请 | 3d? | 2017-03-15 | 2017-03-17 |  |  | 15d | finish no earlier than 2017-03-17 |
| 53 | 1.2.1.2 | **HIS业务流程** | 4d? | 2017-03-09 A | 2017-03-12 A |  | 100% |  |  |
| 54 |  | 业务功能及接口梳理 | 3d? | 2017-03-09 A | 2017-03-11 A |  | 100% |  | start no earlier than 2017-03-09 |
| 55 |  | 评审确认 | 1d? | 2017-03-12 A | 2017-03-12 A | 54 | 100% |  |  |
| 56 | 1.2.2 | **定制开发** | 64d? | 2017-01-16 A | 2017-04-05 |  | 7% | 37d |  |
| 57 | 1.2.2.1 | **硬件调试** | 13d? | 2017-03-20 | 2017-04-05 |  |  | 0d |  |
| 58 |  | 组件调试及封装 | 10d? | 2017-03-20 | 2017-03-30 |  |  | 0d | finish no earlier than 2017-03-30 |
| 59 |  | 整机调试 | 3d | 2017-03-31 | 2017-04-05 | 58 |  | 0d | finish no earlier than 2017-04-05 |
| 60 | 1.2.2.2 | **自助机功能** | 5d | 2017-03-13 | 2017-03-17 |  |  |  |  |
| 61 |  | 办理就诊卡 | 1d | 2017-03-13 | 2017-03-13 |  |  | 56d | start no earlier than 2017-03-13 |
| 62 |  | 自助建档 | 1d? | 2017-03-13 | 2017-03-13 |  |  | 19d |  |
| 63 |  | 自助发卡 | 1d? | 2017-03-13 | 2017-03-13 |  |  | 19d |  |
| 64 |  | 就诊卡挂失 | 1d? | 2017-03-13 | 2017-03-13 |  |  | 19d |  |
| 65 |  | 预约医生 | 1d? | 2017-03-13 | 2017-03-13 |  |  | 19d |  |
| 66 |  | 预约签到 | 1d? | 2017-03-13 | 2017-03-13 |  |  | 19d |  |
| 67 |  | 预约查询 | 1d? | 2017-03-13 | 2017-03-13 |  |  | 19d |  |
| 68 |  | 就医指南查询 | 1d? | 2017-03-13 | 2017-03-13 |  |  | 19d |  |
| 69 |  | 现金预存 | 1d? | 2017-03-13 | 2017-03-13 |  |  | 19d |  |
| 70 |  | 银行卡预存 | 1d? | 2017-03-13 | 2017-03-13 |  |  | 19d |  |

| ID | WBS | Task | Duration | Start | Finish | Predecessors | Complete | Total float | Constraint |
| --- | --- | --- | --- | --- | --- | --- | --- | --- | --- |
| 71 |  | 微信预存 | 1d? | 2017-03-13 | 2017-03-13 |  |  | 19d |  |
| 72 |  | 支付宝预存 | 1d? | 2017-03-13 | 2017-03-13 |  |  | 19d |  |
| 73 |  | 预存查询 | 1d? | 2017-03-13 | 2017-03-13 |  |  | 19d |  |
| 74 |  | 预存退款 | 1d? | 2017-03-13 | 2017-03-13 |  |  | 19d |  |
| 75 |  | 缴费 | 1d? | 2017-03-13 | 2017-03-13 |  |  | 19d |  |
| 76 |  | 缴费查询 | 1d? | 2017-03-13 | 2017-03-13 |  |  | 19d |  |
| 77 |  | 门诊病历打印 | 1d? | 2017-03-13 | 2017-03-13 |  |  | 19d |  |
| 78 |  | 检查单查询 | 1d? | 2017-03-13 | 2017-03-13 |  |  | 19d |  |
| 79 |  | 住院预缴 | 1d? | 2017-03-13 | 2017-03-13 |  |  | 19d |  |
| 80 |  | 住院日清单 | 1d? | 2017-03-13 | 2017-03-13 |  |  | 19d |  |
| 81 |  | 住院费用查询 | 1d? | 2017-03-13 | 2017-03-13 |  |  | 19d |  |
| 82 | 1.2.2.3 | **医院管理功能** | 3d | 2017-03-24 | 2017-03-26 |  |  |  |  |
| 83 |  | 用户管理 | 1d? | 2017-03-31 | 2017-03-31 |  |  | 39d | finish no earlier than 2017-03-31 |
| 84 |  | 组织机构管理 | 1d? | 2017-03-24 | 2017-03-24 |  |  | 8d |  |
| 85 |  | 权限管理 | 1d? | 2017-03-24 | 2017-03-24 |  |  | 8d |  |
| 86 |  | 银行管理 | 1d? | 2017-03-24 | 2017-03-24 |  |  | 8d |  |
| 87 |  | 自助机管理 | 1d? | 2017-03-24 | 2017-03-24 |  |  | 8d |  |
| 88 |  | 现金补录 | 1d? | 2017-03-24 | 2017-03-24 |  |  | 8d |  |
| 89 |  | 对账查询 | 1d? | 2017-03-24 | 2017-03-24 |  |  | 8d |  |
| 90 |  | 对账后处理 | 1d? | 2017-03-24 | 2017-03-24 |  |  | 8d |  |
| 91 | 1.2.2.4 | **银行管理功能** | 1d? | 2017-02-10 | 2017-02-10 |  |  | 46d |  |
| 92 |  | 现金管理 | 1d? | 2017-02-10 | 2017-02-10 |  |  | 46d |  |
| 93 | 1.2.2.5 | **后台功能** | 51d? | 2017-01-16 A | 2017-03-19 |  | 31% | 13d |  |
| 94 | 1.2.2.5.1 | **支付结算** | 51d | 2017-01-16 A | 2017-03-19 |  | 40% | 13d |  |
| 95 |  | 银联支付 | 4d | 2017-01-16 A | 2017-01-19 A | 23 | 100% |  |  |
| 96 |  | 闪付 | 1d | 2017-02-10 | 2017-02-10 | 95 |  | 44d |  |
| 97 |  | Apple pay | 2d | 2017-02-11 | 2017-02-13 | 96 |  | 44d |  |
| 98 |  | 支付宝支付 | 3d | 2017-03-14 | 2017-03-16 |  |  | 13d | finish no earlier than 2017-03-16 |
| 99 |  | 微信支付 | 3d | 2017-03-17 | 2017-03-19 | 98 |  | 13d | finish no earlier than 2017-03-18 |
| 100 |  | HIS接口调试 | 1d? | 2017-02-10 | 2017-02-10 |  |  | 46d |  |
| 101 |  | Socket缴费 | 1d? | 2017-02-10 | 2017-02-10 |  |  | 46d |  |
| 102 |  | 银行接口调试 | 1d? | 2017-02-10 | 2017-02-10 |  |  | 46d |  |
| 103 |  | 集成测试 | 5d | 2017-03-25 | 2017-03-30 |  |  | 3d | finish no earlier than 2017-03-30 |
| 104 | 1.3 | **SSM研发第二阶段** | 37d? | 2017-04-06 | 2017-05-22 | 48 |  | 0d |  |
| 105 | 1.3.1 | **开发** | 22d | 2017-04-06 | 2017-05-01 |  |  | 0d |  |
| 106 | 1.3.1.1 | **自助机业务开发** | 21d | 2017-04-06 | 2017-04-29 |  |  | 0d |  |
| 107 |  | 当日挂号 | 4d | 2017-04-06 | 2017-04-10 |  |  | 0d |  |
| 108 |  | 挂号查询 | 2d | 2017-04-11 | 2017-04-12 | 107 |  | 0d |  |
| 109 |  | 挂号检查 | 2d | 2017-04-13 | 2017-04-14 | 108 |  | 0d |  |
| 110 |  | 食堂费用查询 | 2d | 2017-04-15 | 2017-04-17 | 109 |  | 0d |  |
| 111 |  | 院内导航 | 6d | 2017-04-18 | 2017-04-24 | 110 |  | 0d |  |
| 112 |  | 满意度调查 | 5d | 2017-04-25 | 2017-04-29 | 111 |  | 0d |  |
| 113 | 1.3.1.2 | **管理功能开发** | 22d | 2017-04-06 | 2017-05-01 |  |  | 0d |  |
| 114 |  | 机构管理 | 4d | 2017-04-06 | 2017-04-10 |  |  | 0d |  |
| 115 |  | 功能管理 | 4d | 2017-04-11 | 2017-04-14 | 114 |  | 0d |  |
| 116 |  | 权限管理 | 3d | 2017-04-15 | 2017-04-18 | 115 |  | 0d |  |
| 117 |  | 自助机布放区域管理 | 2d | 2017-04-19 | 2017-04-20 | 116 |  | 0d |  |
| 118 |  | 自助机管理 | 2d | 2017-04-21 | 2017-04-22 | 117 |  | 0d |  |
| 119 |  | 运行监控 | 5d | 2017-04-24 | 2017-04-28 | 118 |  | 0d |  |
| 120 |  | 日志管理 | 2d | 2017-04-29 | 2017-05-01 | 119 |  | 0d |  |
| 121 |  | 系统日志查询 | 1d | 2017-05-01 | 2017-05-01 | 112 |  | 0d |  |
| 122 | 1.3.2 | **整体测试** | 5d | 2017-05-02 | 2017-05-08 | 105 |  | 0d |  |
| 123 |  | 集成测试 | 3d | 2017-05-02 | 2017-05-04 |  |  | 0d |  |
| 124 |  | 性能测试 | 2d | 2017-05-05 | 2017-05-08 | 123 |  | 0d |  |
| 125 | 1.3.3 | **文档整理** | 10d? | 2017-05-09 | 2017-05-22 | 122 |  | 0d |  |
| 126 |  | 编写产品白皮书 | 2d | 2017-05-09 | 2017-05-10 |  |  | 0d |  |
| 127 |  | 编写解决方案PPT | 3d | 2017-05-11 | 2017-05-15 | 126 |  | 0d |  |
| 128 |  | 编写产品报价文件 | 1d? | 2017-05-16 | 2017-05-16 | 127 |  | 0d |  |
| 129 |  | 编写需求调研指引 | 2d | 2017-05-17 | 2017-05-18 | 128 |  | 0d |  |
| 130 |  | 编写接口需求规格说明书 | 2d | 2017-05-19 | 2017-05-22 | 129 |  | 0d |  |
| 131 |  | 编写实施手册 | 5d | 2017-05-09 | 2017-05-15 |  |  | 0d |  |
| 132 |  | 编写运行维护手册 | 5d | 2017-05-16 | 2017-05-22 | 131 |  | 0d |  |

## Version 2 (saved 2017-05-03, file 自助机产品研发项目工程表V2.mpp)

Note of the change: normal commit

Last finish 2017-05-22 → 2017-07-05 (+44d). Complete tasks 35 → 55.

Added:

| ID | Task | Duration | Start | Finish | Predecessors | Constraint | Resources |
| --- | --- | --- | --- | --- | --- | --- | --- |
| 48 | **昆华自助机系统第一阶段** | 96d? | 2017-01-16 A | 2017-05-15 | 2 |  |  |
| 60 | 定时开关机 | 8d? | 2017-04-24 A | 2017-05-02 A |  | finish no earlier than 2017-05-02 |  |
| 61 | 浏览器控制 | 8d? | 2017-04-24 A | 2017-05-02 A |  | finish no earlier than 2017-05-02 |  |
| 62 | 扩展屏控制 | 8d? | 2017-04-24 A | 2017-05-02 A |  | finish no earlier than 2017-05-02 |  |
| 65 | 医保卡建档 | 46d | 2017-03-13 A | 2017-05-05 |  | finish no earlier than 2017-05-05 |  |
| 81 | 血液科检验 | 26d? | 2017-03-20 A | 2017-04-20 A |  | finish no earlier than 2017-04-20 |  |
| 105 | HIS对账 | 4d? | 2017-05-02 | 2017-05-05 |  | finish no earlier than 2017-05-05 | 张玉双 |

Removed: 62 自助建档; 63 自助发卡; 102 银行接口调试; 104 SSM研发第二阶段

Changed:

| ID | Task | Start | Finish | Duration | Complete | Total float | Predecessors | Other |
| --- | --- | --- | --- | --- | --- | --- | --- | --- |
| 1 | **自助机研发** |  | 2017-05-22 → 2017-07-05 (+44d) | 125d? → 157d? | 40% → 69% |  |  |  |
| 49 | **业务流程设计** | 2017-03-06 A → 2017-03-07 A (+1d) | 2017-03-17 → 2017-05-05 (+49d) | 12d? → 52d? | 24% → 80% | 15d → 6d |  |  |
| 50 | **支付业务流程** | 2017-03-06 → 2017-03-07 A (+1d) | 2017-03-17 → 2017-05-05 (+49d) | 12d? → 52d? | 0% → 79% | 15d → 6d |  |  |
| 51 | 银行业务流程 | 2017-03-06 → 2017-03-07 A (+1d) | 2017-03-15 → 2017-05-05 (+51d) | 10d? → 52d | 0% → 70% | 14d → none |  | constraint start no earlier than 2017-03-06 → start no earlier than 2017-03-07; resources 张玉双 [40%]; 夏纬一 [20%]; 刘志强 [15%]; 黄勇 [15%] → 张玉双 [20%]; 夏纬一 [20%]; 刘志强 [15%]; 黄勇 [15%] |
| 52 | 商户申请 | 2017-03-15 A | 2017-03-17 → 2017-05-05 (+49d) | 3d? → 44d? | 0% → 90% | 15d → 6d |  | constraint finish no earlier than 2017-03-17 → finish no earlier than 2017-05-05; resources 刘志强 → 刘志强 [10%]; 张玉双 [10%] |
| 54 | 业务功能及接口梳理 |  |  |  |  |  |  | resources 张玉双 [75%]; 夏纬一 [25%] → 张玉双 [60%]; 夏纬一 [20%] |
| 56 | **定制开发** |  | 2017-04-05 → 2017-05-10 (+35d) | 64d? → 93d? | 7% → 71% | 37d → 3d |  |  |
| 57 | **硬件调试** | 2017-03-20 A | 2017-04-05 → 2017-05-02 (+27d) | 13d? → 36d? | 0% → 99% |  |  | resources 樊扬 → 樊扬; 夏纬一; 张玉双 |
| 58 | 组件调试及封装 | 2017-03-20 A | 2017-03-30 → 2017-04-05 A (+6d) | 10d? → 13d? | 0% → 100% | 0d → none |  | constraint finish no earlier than 2017-03-30 → finish no earlier than 2017-04-05 |
| 59 | 整机调试 | 2017-03-31 → 2017-04-06 A (+6d) | 2017-04-05 → 2017-04-20 A (+15d) | 3d → 13d | 0% → 100% | 0d → none |  | constraint finish no earlier than 2017-04-05 → finish no earlier than 2017-04-20 |
| 63 | **自助机功能** | 2017-03-13 A | 2017-03-17 → 2017-05-08 (+52d) | 5d → 47d? | 0% → 92% | none → 5d |  | resources 张玉双 [30%]; 夏纬一 → 樊扬 [10%]; 夏纬一 [90%]; 张玉双 [10%] |
| 64 | 办理就诊卡 | 2017-03-13 A | 2017-03-13 → 2017-04-20 A (+38d) | 1d → 33d | 0% → 100% | 56d → none |  | constraint start no earlier than 2017-03-13 → finish no earlier than 2017-04-20 |
| 66 | 就诊卡挂失补办 | 2017-03-13 A | 2017-03-13 → 2017-04-20 A (+38d) | 1d? → 33d | 0% → 100% | 19d → none |  | was named 就诊卡挂失; constraint none → finish no earlier than 2017-04-20 |
| 67 | 预约医生 | 2017-03-13 A | 2017-03-13 → 2017-04-20 A (+38d) | 1d? → 33d | 0% → 100% | 19d → none |  | constraint none → finish no earlier than 2017-04-20 |
| 68 | 预约签到 | 2017-03-13 A | 2017-03-13 → 2017-04-20 A (+38d) | 1d? → 33d | 0% → 100% | 19d → none |  | constraint none → finish no earlier than 2017-04-20 |
| 69 | 预约查询 | 2017-03-13 A | 2017-03-13 → 2017-04-20 A (+38d) | 1d? → 33d | 0% → 100% | 19d → none |  | constraint none → finish no earlier than 2017-04-20 |
| 70 | 就医指南查询 |  |  |  |  | 19d → 51d |  | constraint none → start no earlier than 2017-03-13 |
| 71 | 现金预存 | 2017-03-13 A | 2017-03-13 → 2017-04-20 A (+38d) | 1d? → 33d | 0% → 100% | 19d → none |  | constraint none → finish no earlier than 2017-04-20 |
| 72 | 银行卡预存 | 2017-03-13 A | 2017-03-13 → 2017-04-20 A (+38d) | 1d? → 33d | 0% → 100% | 19d → none |  | constraint none → finish no earlier than 2017-04-20 |
| 73 | 微信预存 | 2017-03-13 → 2017-04-20 A (+38d) | 2017-03-13 → 2017-05-05 (+53d) | 1d? → 14d | 0% → 25% | 19d → 6d |  | constraint none → finish no earlier than 2017-05-05 |
| 74 | 支付宝预存 | 2017-03-13 A | 2017-03-13 → 2017-04-20 A (+38d) | 1d? → 33d | 0% → 100% | 19d → none |  | constraint none → finish no earlier than 2017-04-20 |
| 75 | 预存查询 | 2017-03-13 A | 2017-03-13 → 2017-04-20 A (+38d) | 1d? → 33d | 0% → 100% | 19d → none |  | constraint none → finish no earlier than 2017-04-20 |
| 76 | 预存退款 | 2017-03-13 A | 2017-03-13 → 2017-05-08 (+56d) | 1d? → 47d | 0% → 50% | 19d → 5d |  | constraint none → finish no earlier than 2017-05-08 |
| 77 | 缴费 | 2017-03-13 A | 2017-03-13 → 2017-05-03 (+51d) | 1d? → 44d | 0% → 90% | 19d → 8d |  | constraint none → finish no earlier than 2017-05-03 |
| 78 | 缴费查询 | 2017-03-13 A | 2017-03-13 → 2017-04-20 A (+38d) | 1d? → 33d | 0% → 100% | 19d → none |  | constraint none → finish no earlier than 2017-04-20 |
| 79 | 门诊病历打印 | 2017-03-13 A | 2017-03-13 → 2017-04-20 A (+38d) | 1d? → 33d | 0% → 100% | 19d → none |  | constraint none → finish no earlier than 2017-04-20 |
| 80 | 检查单查询 | 2017-03-13 A | 2017-03-13 → 2017-04-20 A (+38d) | 1d? → 33d | 0% → 100% | 19d → none |  | constraint none → finish no earlier than 2017-04-20 |
| 82 | 住院预缴 | 2017-03-13 A | 2017-03-13 → 2017-04-20 A (+38d) | 1d? → 33d | 0% → 100% | 19d → none |  | constraint none → finish no earlier than 2017-04-20 |
| 83 | 住院日清单 | 2017-03-13 A | 2017-03-13 → 2017-04-20 A (+38d) | 1d? → 33d | 0% → 100% | 19d → none |  | constraint none → finish no earlier than 2017-04-20 |
| 84 | 住院费用查询 |  |  |  |  | 19d → 51d |  | constraint none → start no earlier than 2017-03-13 |
| 85 | **医院管理功能** | 2017-03-24 → 2017-03-20 A (-4d) | 2017-03-26 → 2017-05-10 (+45d) | 3d → 42d? | 0% → 25% | none → 3d |  | resources 夏纬一 → 夏纬一; 张玉双 |
| 86 | 用户管理 | 2017-03-31 → 2017-03-20 A (-11d) | 2017-03-31 → 2017-05-10 (+40d) | 1d? → 42d? | 0% → 75% | 39d → 3d |  | constraint finish no earlier than 2017-03-31 → finish no earlier than 2017-05-10 |
| 87 | 组织机构管理 | 2017-03-24 → 2017-03-20 A (-4d) | 2017-03-24 → 2017-05-10 (+47d) | 1d? → 42d? | 0% → 25% | 8d → 3d |  | constraint none → finish no earlier than 2017-05-10 |
| 88 | 权限管理 | 2017-03-24 → 2017-03-20 A (-4d) | 2017-03-24 → 2017-05-10 (+47d) | 1d? → 42d? | 0% → 75% | 8d → 3d |  | constraint none → finish no earlier than 2017-05-10 |
| 89 | 银行管理 | 2017-03-24 → 2017-03-20 (-4d) | 2017-03-24 → 2017-05-10 (+47d) | 1d? → 42d? |  | 8d → 3d |  | constraint none → finish no earlier than 2017-05-10 |
| 90 | 自助机管理 | 2017-03-24 → 2017-03-20 A (-4d) | 2017-03-24 → 2017-05-10 (+47d) | 1d? → 42d? | 0% → 25% | 8d → 3d |  | constraint none → finish no earlier than 2017-05-10 |
| 91 | 现金补录 | 2017-03-24 → 2017-03-20 (-4d) | 2017-03-24 → 2017-05-10 (+47d) | 1d? → 42d? |  | 8d → 3d |  | constraint none → finish no earlier than 2017-05-10 |
| 92 | 对账查询 | 2017-03-24 → 2017-03-20 (-4d) | 2017-03-24 → 2017-05-10 (+47d) | 1d? → 42d? |  | 8d → 3d |  | constraint none → finish no earlier than 2017-05-10 |
| 93 | 对账后处理 | 2017-03-24 → 2017-03-20 (-4d) | 2017-03-24 → 2017-05-10 (+47d) | 1d? → 42d? |  | 8d → 3d |  | constraint none → finish no earlier than 2017-05-10 |
| 94 | **银行管理功能** | 2017-02-10 → 2017-05-02 (+81d) | 2017-02-10 → 2017-05-10 (+89d) | 1d? → 7d? |  | 46d → 3d |  | resources none → 樊扬; 夏纬一 |
| 95 | 现金管理 | 2017-02-10 → 2017-05-02 (+81d) | 2017-02-10 → 2017-05-10 (+89d) | 1d? → 7d? |  | 46d → 3d |  | constraint none → start no earlier than 2017-05-02 |
| 96 | **后台功能** |  | 2017-03-19 → 2017-05-08 (+50d) | 51d? → 91d? | 31% → 75% | 13d → 5d |  |  |
| 97 | **支付结算** |  | 2017-03-19 → 2017-05-08 (+50d) | 51d → 91d? | 40% → 72% | 13d → 5d |  |  |
| 98 | 银联支付 |  | 2017-01-19 A → 2017-05-05 (+106d) | 4d → 77d | 100% → 62% | none → 6d |  | constraint none → finish no earlier than 2017-05-05; resources 张玉双 → 樊扬; 夏纬一 |
| 99 | 闪付 |  |  |  |  | 44d → 78d | 98 → none |  |
| 100 | Apple pay | 2017-02-11 → 2017-02-10 (-1d) | 2017-02-13 → 2017-02-11 (-2d) |  |  | 44d → 77d | 99 → none |  |
| 101 | 支付宝支付 | 2017-03-14 A | 2017-03-16 → 2017-04-20 (+35d) | 3d → 32d | 0% → 75% | 13d → 10d |  | constraint finish no earlier than 2017-03-16 → finish no earlier than 2017-04-20 |
| 102 | 微信支付 | 2017-03-17 → 2017-05-02 A (+46d) | 2017-03-19 → 2017-05-08 (+50d) | 3d → 5d | 0% → 20% | 13d → 5d |  | constraint finish no earlier than 2017-03-18 → finish no earlier than 2017-05-08 |
| 103 | 银行退费 | 2017-02-10 → 2017-03-13 A (+31d) | 2017-02-10 → 2017-04-20 A (+69d) | 1d? → 33d? | 0% → 100% | 46d → none |  | was named Socket缴费; constraint none → finish no earlier than 2017-04-20; resources none → 张玉双 |
| 104 | HIS接口 | 2017-02-10 → 2017-03-13 A (+31d) | 2017-02-10 → 2017-04-20 (+69d) | 1d? → 33d? | 0% → 95% | 46d → 19d |  | was named HIS接口调试; constraint none → finish no earlier than 2017-04-20; resources none → 张玉双 |
| 106 | 集成测试 | 2017-03-25 → 2017-05-05 (+41d) | 2017-03-30 → 2017-05-15 (+46d) | 5d → 7d |  | 3d → 0d |  | constraint finish no earlier than 2017-03-30 → finish no earlier than 2017-05-15 |
| 107 | **昆华自助机系统** | 2017-01-16 A → 2017-05-16 (+120d) | 2017-04-05 → 2017-07-05 (+91d) | 64d? → 37d? | 10% → 0% | 37d → 0d | 2 → 48 |  |
| 108 | **开发** | 2017-04-06 → 2017-05-16 (+40d) | 2017-05-01 → 2017-06-14 (+44d) |  |  |  |  |  |
| 109 | **自助机业务开发** | 2017-04-06 → 2017-05-16 (+40d) | 2017-04-29 → 2017-06-13 (+45d) |  |  |  |  |  |
| 110 | 当日挂号 | 2017-04-06 → 2017-05-16 (+40d) | 2017-04-10 → 2017-05-19 (+39d) |  |  |  |  |  |
| 111 | 挂号查询 | 2017-04-11 → 2017-05-22 (+41d) | 2017-04-12 → 2017-05-23 (+41d) |  |  |  |  |  |
| 112 | 挂号检查 | 2017-04-13 → 2017-05-24 (+41d) | 2017-04-14 → 2017-05-25 (+41d) |  |  |  |  |  |
| 113 | 食堂费用查询 | 2017-04-15 → 2017-05-26 (+41d) | 2017-04-17 → 2017-05-29 (+42d) |  |  |  |  |  |
| 114 | 院内导航 | 2017-04-18 → 2017-05-30 (+42d) | 2017-04-24 → 2017-06-06 (+43d) |  |  |  |  |  |
| 115 | 满意度调查 | 2017-04-25 → 2017-06-07 (+43d) | 2017-04-29 → 2017-06-13 (+45d) |  |  |  |  |  |
| 116 | **管理功能开发** | 2017-04-06 → 2017-05-16 (+40d) | 2017-05-01 → 2017-06-14 (+44d) |  |  |  |  |  |
| 117 | 机构管理 | 2017-04-06 → 2017-05-16 (+40d) | 2017-04-10 → 2017-05-19 (+39d) |  |  |  |  |  |
| 118 | 功能管理 | 2017-04-11 → 2017-05-22 (+41d) | 2017-04-14 → 2017-05-25 (+41d) |  |  |  |  |  |
| 119 | 权限管理 | 2017-04-15 → 2017-05-26 (+41d) | 2017-04-18 → 2017-05-30 (+42d) |  |  |  |  |  |
| 120 | 自助机布放区域管理 | 2017-04-19 → 2017-05-31 (+42d) | 2017-04-20 → 2017-06-01 (+42d) |  |  |  |  |  |
| 121 | 自助机管理 | 2017-04-21 → 2017-06-02 (+42d) | 2017-04-22 → 2017-06-05 (+44d) |  |  |  |  |  |
| 122 | 运行监控 | 2017-04-24 → 2017-06-06 (+43d) | 2017-04-28 → 2017-06-12 (+45d) |  |  |  |  |  |
| 123 | 日志管理 | 2017-04-29 → 2017-06-13 (+45d) | 2017-05-01 → 2017-06-14 (+44d) |  |  |  |  |  |
| 124 | 系统日志查询 | 2017-05-01 → 2017-06-14 (+44d) | 2017-05-01 → 2017-06-14 (+44d) |  |  |  |  |  |
| 125 | **整体测试** | 2017-05-02 → 2017-06-15 (+44d) | 2017-05-08 → 2017-06-21 (+44d) |  |  |  |  |  |

| ID | Task | Start | Finish |
| --- | --- | --- | --- |
| 126 | 集成测试 | 2017-05-02 → 2017-06-15 (+44d) | 2017-05-04 → 2017-06-19 (+46d) |
| 127 | 性能测试 | 2017-05-05 → 2017-06-20 (+46d) | 2017-05-08 → 2017-06-21 (+44d) |
| 128 | **文档整理** | 2017-05-09 → 2017-06-22 (+44d) | 2017-05-22 → 2017-07-05 (+44d) |
| 129 | 编写产品白皮书 | 2017-05-09 → 2017-06-22 (+44d) | 2017-05-10 → 2017-06-23 (+44d) |
| 130 | 编写解决方案PPT | 2017-05-11 → 2017-06-26 (+46d) | 2017-05-15 → 2017-06-28 (+44d) |
| 131 | 编写产品报价文件 | 2017-05-16 → 2017-06-29 (+44d) | 2017-05-16 → 2017-06-29 (+44d) |
| 132 | 编写需求调研指引 | 2017-05-17 → 2017-06-30 (+44d) | 2017-05-18 → 2017-07-03 (+46d) |
| 133 | 编写接口需求规格说明书 | 2017-05-19 → 2017-07-04 (+46d) | 2017-05-22 → 2017-07-05 (+44d) |
| 134 | 编写实施手册 | 2017-05-09 → 2017-06-22 (+44d) | 2017-05-15 → 2017-06-28 (+44d) |
| 135 | 编写运行维护手册 | 2017-05-16 → 2017-06-29 (+44d) | 2017-05-22 → 2017-07-05 (+44d) |
